Schedule from a web Gantt chart, 2025-04-15 to 2025-04-15.
Saturdays and Sundays are off

## Schedule

| ID | WBS | Task | Duration | Start | Finish |
| --- | --- | --- | --- | --- | --- |
| 2 | 1 | 需求收集 | 1d | 2025-04-15 | 2025-04-15 |
